| id | type | name | start | finish | baselineStart | baselineFinish | actualStart | actualFinish | parent | resources | status | pctComplete | expectedPct | group |
| --- | --- | --- | --- | --- | --- | --- | --- | --- | --- | --- | --- | --- | --- | --- |
| 1 | MAIN TASK | Plant Shutdown / Cooling | 2026-05-31T22:00 | 2026-06-03T19:00 | 2026-05-31T22:00 | 2026-06-03T19:00 | 2026-05-31T22:00 | 2026-06-03T19:00 |  |  |  |  |  |  |
| 1.1 | Subtask | Plant shutdown | 2026-05-31T22:00 | 2026-05-31T23:00 | 2026-05-31T22:00 | 2026-05-31T23:00 | 2026-05-31T22:00 | 2026-05-31T23:00 | 1 | Turbine | Complete | 100 | 100 |  |
| 1.2 | Subtask | Plant cooling | 2026-05-31T23:00 | 2026-06-03T19:00 | 2026-05-31T23:00 | 2026-06-03T19:00 | 2026-05-31T23:00 | 2026-06-03T19:00 | 1 | Turbine | Complete | 100 | 100 |  |
| 2 | MAIN TASK | BOP | 2026-05-31T22:00 | 2026-06-19T16:00 | 2026-05-31T23:00 | 2026-06-19T07:00 | 2026-05-31T22:00 |  |  |  | Complete | 100 |  | BOP |
| 2.1 | Subtask | Condensate & Feedwater Draining | 2026-06-03T22:00 | 2026-06-04T07:00 | 2026-06-03T22:00 | 2026-06-04T07:00 | 2026-06-03T22:00 | 2026-06-04T07:00 | 2 | BOP |  | 99 | 100 |  |
| 2.2 | Subtask | SSG Draining | 2026-05-31T23:00 | 2026-06-04T07:00 | 2026-05-31T23:00 | 2026-06-04T07:00 | 2026-05-31T23:00 | 2026-06-04T07:00 | 2 | SSG |  | 100 | 100 |  |
| 3 | MAIN TASK | Vac-Cent | 2026-05-31T23:00 | 2026-06-07T13:00 | 2026-05-31T23:00 | 2026-06-08T01:00 | 2026-05-31T23:00 |  |  | ACC |  | 67 | 100 | BOP |
| 3.1 | Subtask | Removal of pumps | 2026-05-31T23:00 | 2026-06-01T07:00 | 2026-05-31T23:00 | 2026-06-01T07:00 | 2026-05-31T23:00 | 2026-06-01T07:00 | 3 | ACC | Complete | 100 | 100 |  |
| 3.2 | Subtask | AF1MAJ62AP001 - Replace shaft | 2026-06-03T08:00 | 2026-06-07T05:00 | 2026-06-03T20:00 | 2026-06-07T05:00 | 2026-06-03T08:00 |  | 3 | ACC | Complete | 100 | 100 |  |
| 3.3 | Subtask | AF1MAJ61AP001 | 2026-06-03T08:00 | 2026-06-06T17:00 | 2026-06-03T20:00 | 2026-06-07T05:00 | 2026-06-03T08:00 |  | 3 | ACC | Complete | 100 | 100 |  |
| 3.4 | Subtask | Replace pumps | 2026-06-07T05:00 | 2026-06-07T13:00 | 2026-06-07T17:00 | 2026-06-08T01:00 |  |  | 3 | ACC | In progress | 1 | 100 |  |
| 3.5 | Subtask | Transport to 124 Snapper Road, Wadeville, Germiston | 2026-06-01T13:00 | 2026-06-03T08:00 | 2026-06-01T13:00 | 2026-06-03T08:00 | 2026-06-01T13:00 | 2026-06-03T08:00 | 3 | ACC | Complete | 100 | 100 |  |
| 3.6 | Subtask | Transport to site | 2026-06-06T17:00 | 2026-06-07T05:00 | 2026-06-07T05:00 | 2026-06-07T17:00 |  |  | 3 | ACC | In progress | 1 | 100 |  |
| 4 | MAIN TASK | BTS-GSB Services (12 Months) | 2026-05-31T23:00 | 2026-06-05T08:00 | 2026-05-31T23:00 | 2026-06-08T01:30 | 2026-05-31T23:00 |  |  | Gland steam boiler | Complete | 100 | 100 | BOP |
| 4.1 | Subtask | Isolate (Night) | 2026-05-31T23:00 | 2026-06-01T00:00 | 2026-05-31T23:00 | 2026-06-01T00:00 | 2026-05-31T23:00 | 2026-06-01T00:00 | 4 | Gland steam boiler | Complete | 100 | 100 |  |
| 4.2 | Subtask | Complete safety induction if needed | 2026-06-01T09:00 | 2026-06-01T11:00 | 2026-06-01T09:00 | 2026-06-01T11:00 | 2026-06-01T09:00 | 2026-06-01T11:00 | 4 | Gland steam boiler | Complete | 100 | 100 |  |
| 4.3 | Subtask | Remove burner from Boiler | 2026-06-01T11:00 | 2026-06-01T16:00 | 2026-06-01T11:00 | 2026-06-01T16:00 | 2026-06-01T11:00 | 2026-06-01T16:00 | 4 | Gland steam boiler | Complete | 100 | 100 |  |
| 4.4 | Subtask | Open/remove boiler doors for boiler to cool down | 2026-06-01T15:00 | 2026-06-01T16:00 | 2026-06-01T16:00 | 2026-06-01T16:00 | 2026-06-01T15:00 | 2026-06-01T16:00 | 4 | Gland steam boiler | Complete | 100 | 100 |  |
| 4.5 | Subtask | Clean boiler with high pressure jet cleaner | 2026-06-02T07:00 | 2026-06-03T15:00 | 2026-06-02T07:00 | 2026-06-03T15:00 | 2026-06-02T07:00 | 2026-06-03T15:00 | 4 | Gland steam boiler | Complete | 100 | 100 |  |
| 4.6 | Subtask | Strip burner completely for cleaning & inspection | 2026-06-02T07:00 | 2026-06-03T15:00 | 2026-06-03T15:00 | 2026-06-03T17:30 | 2026-06-02T07:00 | 2026-06-03T15:00 | 4 | Gland steam boiler | Complete | 100 | 100 |  |
| 4.7 | Subtask | Cut gaskets & close boiler doors | 2026-06-02T07:00 | 2026-06-03T15:00 | 2026-06-04T08:30 | 2026-06-04T10:30 | 2026-06-02T07:00 | 2026-06-03T15:00 | 4 | Gland steam boiler | Complete | 100 | 100 |  |
| 4.8 | Subtask | Re-assemble burner and replace service items | 2026-06-04T07:00 | 2026-06-04T08:00 | 2026-06-04T10:30 | 2026-06-04T11:30 | 2026-06-04T07:00 | 2026-06-04T08:00 | 4 | Gland steam boiler | Complete | 100 | 100 |  |
| 4.9 | Subtask | Install burner on Aux boiler | 2026-06-04T07:00 | 2026-06-04T08:15 | 2026-06-05T02:30 | 2026-06-05T02:30 | 2026-06-04T07:00 | 2026-06-04T08:15 | 4 | Gland steam boiler | Complete | 100 | 100 |  |
| 4.10 | Subtask | Re-connect all wiring on burner | 2026-06-04T07:00 | 2026-06-04T08:30 | 2026-06-05T02:30 | 2026-06-05T02:30 | 2026-06-04T07:00 | 2026-06-04T08:30 | 4 | Gland steam boiler | Complete | 100 | 100 |  |
| 4.11 | Subtask | Pre-commissioning testing | 2026-06-04T07:00 | 2026-06-04T15:00 | 2026-06-05T02:30 | 2026-06-05T02:30 | 2026-06-04T07:00 | 2026-06-04T15:00 | 4 | Gland steam boiler | Complete | 100 | 100 |  |
| 4.12 | Subtask | Test burner & boiler safety devices | 2026-06-04T07:00 | 2026-06-04T15:00 | 2026-06-05T17:30 | 2026-06-05T17:30 | 2026-06-04T07:00 | 2026-06-04T15:00 | 4 | Gland steam boiler | Complete | 100 | 100 |  |
| 4.13 | Subtask | Set safety devices accordingly | 2026-06-04T07:00 | 2026-06-04T15:00 | 2026-06-05T17:30 | 2026-06-05T17:30 | 2026-06-04T07:00 | 2026-06-04T15:00 | 4 | Gland steam boiler | Complete | 100 | 100 |  |
| 5 | MAIN TASK | April Konstruksie | 2026-06-01T14:00 | 2026-06-16T07:00 | 2026-06-02T07:00 | 2026-06-17T07:00 | 2026-06-01T14:00 |  |  |  |  | 100 |  | BOP |
| 5.1 | Subtask | Reinforcement of Ullage tank support system foundation | 2026-06-02T07:00 | 2026-06-05T07:00 | 2026-06-02T07:00 | 2026-06-05T07:00 | 2026-06-02T07:00 | 2026-06-05T07:00 | 5 | Ullage |  | 100 | 100 |  |
| 5.2 | Subtask | Concrete work at B44 | 2026-06-05T07:00 | 2026-06-08T07:00 | 2026-06-05T07:00 | 2026-06-08T07:00 |  |  | 5 | Solar field |  | 100 | 100 |  |
| 5.3 | Subtask | Concrete work on steam line drain manholes | 2026-06-08T07:00 | 2026-06-11T07:00 | 2026-06-08T07:00 | 2026-06-11T07:00 | 2026-06-08T07:00 |  | 5 | Steam |  | 100 | 100 |  |
| 5.4 | Subtask | Concrete repairs on the gland steam boiler manhole | 2026-06-04T07:00 | 2026-06-14T07:00 | 2026-06-11T07:00 | 2026-06-14T07:00 | 2026-06-04T07:00 | 2026-06-14T07:00 | 5 | Gland steam boiler |  | 100 | 100 |  |
| 5.5 | Subtask | Concrete works at HTF Pumps | 2026-06-01T14:00 | 2026-06-16T07:00 | 2026-06-14T07:00 | 2026-06-17T07:00 | 2026-06-01T14:00 | 2026-06-16T07:00 | 5 | HTF circuit |  | 100 | 100 |  |
| 6 | MAIN TASK | Applus - Pressure Vessels Inspections | 2026-06-04T07:00 | 2026-06-12T23:00 | 2026-06-06T00:00 | 2026-06-15T03:13 | 2026-06-04T07:00 |  |  | Power Block |  | 100 | 100 | BOP |
| 6.1 | Subtask | AF1WSX10BC001 - HTF / Salt Heat Exchanger | 2026-06-06T00:00 | 2026-06-06T01:00 | 2026-06-06T00:00 | 2026-06-06T01:00 | 2026-06-06T00:00 | 2026-06-06T01:00 | 6 | TES |  | 100 | 100 |  |
| 6.2 | Subtask | AF1WSX10BC002 - HTF / Salt Heat Exchanger | 2026-06-06T00:00 | 2026-06-06T02:00 | 2026-06-06T01:00 | 2026-06-06T02:00 | 2026-06-06T00:00 | 2026-06-06T02:00 | 6 | TES |  | 100 | 100 |  |
| 6.3 | Subtask | AF1WSX10BC003 - HTF / Salt Heat Exchanger | 2026-06-06T00:00 | 2026-06-06T03:00 | 2026-06-06T02:00 | 2026-06-06T03:00 | 2026-06-06T00:00 | 2026-06-06T03:00 | 6 | TES |  | 100 | 100 |  |
| 6.4 | Subtask | AF1WSX10BC004 - HTF / Salt Heat Exchanger | 2026-06-06T00:00 | 2026-06-06T04:00 | 2026-06-06T03:00 | 2026-06-06T04:00 | 2026-06-06T00:00 | 2026-06-06T04:00 | 6 | TES |  | 100 | 100 |  |
| 6.5 | Subtask | AF1WSX10BC005 - HTF / Salt Heat Exchanger | 2026-06-06T00:00 | 2026-06-06T05:00 | 2026-06-06T04:00 | 2026-06-06T05:00 | 2026-06-06T00:00 | 2026-06-06T05:00 | 6 | TES |  | 100 | 100 |  |
| 6.6 | Subtask | AF1WSX10BC006 - HTF / Salt Heat Exchanger | 2026-06-06T00:00 | 2026-06-06T06:00 | 2026-06-06T05:00 | 2026-06-06T06:00 | 2026-06-06T00:00 | 2026-06-06T06:00 | 6 | TES |  | 100 | 100 |  |
| 6.7 | Subtask | AF1WSX20BC001 - HTF / Salt Heat Exchanger | 2026-06-06T00:00 | 2026-06-06T07:00 | 2026-06-06T06:00 | 2026-06-06T07:00 | 2026-06-06T00:00 | 2026-06-06T07:00 | 6 | TES |  | 100 | 100 |  |
| 6.8 | Subtask | AF1WSX20BC002 - HTF / Salt Heat Exchanger | 2026-06-06T00:00 | 2026-06-06T08:00 | 2026-06-06T07:00 | 2026-06-06T08:00 | 2026-06-06T00:00 | 2026-06-06T08:00 | 6 | TES |  | 100 | 100 |  |
| 6.9 | Subtask | AF1WSX20BC003 - HTF / Salt Heat Exchanger | 2026-06-06T00:00 | 2026-06-06T09:00 | 2026-06-06T08:00 | 2026-06-06T09:00 | 2026-06-06T00:00 | 2026-06-06T09:00 | 6 | TES |  | 100 | 100 |  |
| 6.10 | Subtask | AF1WSX20BC004 - HTF / Salt Heat Exchanger | 2026-06-06T00:00 | 2026-06-07T01:00 | 2026-06-07T00:00 | 2026-06-07T01:00 | 2026-06-06T00:00 | 2026-06-07T01:00 | 6 | TES |  | 100 | 100 |  |
| 6.11 | Subtask | AF1WSX20BC005 - HTF / Salt Heat Exchanger | 2026-06-06T00:00 | 2026-06-07T02:00 | 2026-06-07T01:00 | 2026-06-07T02:00 | 2026-06-06T00:00 | 2026-06-07T02:00 | 6 | TES |  | 100 | 100 |  |
| 6.12 | Subtask | AF1WSX20BC006 - HTF / Salt Heat Exchanger | 2026-06-06T00:00 | 2026-06-07T03:00 | 2026-06-07T02:00 | 2026-06-07T03:00 | 2026-06-06T00:00 | 2026-06-07T03:00 | 6 | TES |  | 100 | 100 |  |
| 6.13 | Subtask | AF1JD20AT001 - HTF Filter | 2026-06-08T10:00 | 2026-06-08T11:00 | 2026-06-07T03:00 | 2026-06-07T04:00 | 2026-06-08T10:00 | 2026-06-08T11:00 | 6 | HTF circuit |  | 100 | 100 |  |
| 6.14 | Subtask | AF1JD22AT001 - HTF Filter | 2026-06-08T11:00 | 2026-06-08T12:00 | 2026-06-07T04:00 | 2026-06-07T05:00 | 2026-06-08T11:00 | 2026-06-08T12:00 | 6 | HTF circuit |  | 100 | 100 |  |
| 6.15 | Subtask | AF1JD24AT001 - HTF Filter | 2026-06-08T12:00 | 2026-06-08T13:00 | 2026-06-07T05:00 | 2026-06-07T06:00 | 2026-06-08T12:00 | 2026-06-08T13:00 | 6 |  |  | 100 | 100 |  |
| 6.16 | Subtask | AF1JD26AT001 - HTF Filter | 2026-06-08T13:00 | 2026-06-08T14:00 | 2026-06-07T06:00 | 2026-06-07T07:00 | 2026-06-08T13:00 | 2026-06-08T14:00 | 6 |  |  | 100 | 100 |  |
| 6.17 | Subtask | AF1JD28AT001 - HTF Filter | 2026-06-08T14:00 | 2026-06-08T15:00 | 2026-06-07T07:00 | 2026-06-07T09:00 | 2026-06-08T14:00 | 2026-06-08T15:00 | 6 |  |  | 100 | 100 |  |
| 6.18 | Subtask | AF1JD30AT001 - HTF Filter | 2026-06-08T15:00 | 2026-06-08T16:00 | 2026-06-08T00:00 | 2026-06-08T02:00 | 2026-06-08T15:00 | 2026-06-08T16:00 | 6 |  |  | 100 | 100 |  |
| 6.19 | Subtask | AF1SG43TK001 - FFS Turbine | 2026-06-07T00:00 | 2026-06-07T00:00 | 2026-06-08T02:00 | 2026-06-08T02:00 | 2026-06-07T00:00 | 2026-06-07T00:00 | 6 |  |  | 100 | 100 |  |
| 6.20 | Subtask | AF1SG47TK001 - FFS Main HTF | 2026-06-07T00:00 | 2026-06-07T00:00 | 2026-06-08T02:00 | 2026-06-08T02:00 | 2026-06-07T00:00 | 2026-06-07T00:00 | 6 |  |  | 100 | 100 |  |
| 6.21 | Subtask | AF1QH_40AC001 - Steam Generator / Boiler | 2026-06-07T00:00 | 2026-06-07T03:00 | 2026-06-08T02:00 | 2026-06-08T05:00 |  |  | 6 |  |  | 100 | 100 |  |
| 6.22 | Subtask | AF1QF30BB001 - Air Tank (Service) | 2026-06-07T00:00 | 2026-06-07T00:00 | 2026-06-08T18:00 | 2026-06-08T18:00 | 2026-06-07T00:00 | 2026-06-07T00:00 | 6 |  |  | 100 | 100 |  |
| 6.23 | Subtask | AF1QF59B001 - Air Tank (Instrument) | 2026-06-07T00:00 | 2026-06-07T00:00 | 2026-06-08T18:00 | 2026-06-08T18:00 | 2026-06-07T00:00 | 2026-06-07T00:00 | 6 |  |  | 100 | 100 |  |
| 6.24 | Subtask | AF1QF54AT001 - Air Dryer | 2026-06-07T00:00 | 2026-06-07T00:00 | 2026-06-08T18:00 | 2026-06-08T18:00 | 2026-06-07T00:00 | 2026-06-07T00:00 | 6 |  |  | 100 | 100 |  |
| 6.25 | Subtask | AF1QF50AT001 - Air Dryer | 2026-06-07T00:00 | 2026-06-07T00:00 | 2026-06-08T18:00 | 2026-06-08T18:00 | 2026-06-07T00:00 | 2026-06-07T00:00 | 6 |  |  | 100 | 100 |  |
| 6.26 | Subtask | AD1HAH10BB001 - Continuous Blowdown Tank | 2026-06-08T12:00 | 2026-06-08T13:00 | 2026-06-08T18:00 | 2026-06-08T20:00 | 2026-06-08T12:00 | 2026-06-08T13:00 | 6 |  |  | 100 | 100 |  |
| 6.27 | Subtask | AF1LAB10BB001 - Deaerator | 2026-06-08T09:00 | 2026-06-08T10:28 | 2026-06-09T10:00 | 2026-06-09T11:28 | 2026-06-08T09:00 | 2026-06-08T10:28 | 6 |  |  | 100 | 100 |  |
| 6.28 | Subtask | AD1HAC10AC001 - Preheater | 2026-06-08T10:28 | 2026-06-08T12:28 | 2026-06-09T11:28 | 2026-06-09T13:28 |  |  | 6 |  |  | 100 | 100 |  |
| 6.29 | Subtask | AD1HAC20AC001 - Preheater | 2026-06-08T12:28 | 2026-06-08T14:28 | 2026-06-09T13:28 | 2026-06-09T15:28 |  |  | 6 |  |  | 100 | 100 |  |
| 6.30 | Subtask | AD1HAH20BB001 - Intermittent Purge Tank | 2026-06-08T14:28 | 2026-06-08T16:28 | 2026-06-09T15:28 | 2026-06-09T17:28 |  |  | 6 |  |  | 100 | 100 |  |
| 6.31 | Subtask | AF1QH52AC001 - Superheater | 2026-06-09T07:28 | 2026-06-09T09:28 | 2026-06-10T08:28 | 2026-06-10T10:28 |  |  | 6 |  |  | 100 | 100 |  |
| 6.32 | Subtask | AF1QH10BB001 - Gland Steam Thermal Deaerator | 2026-06-04T07:00 | 2026-06-09T12:01 | 2026-06-10T10:28 | 2026-06-10T13:28 | 2026-06-04T07:00 |  | 6 |  |  | 100 | 100 |  |
| 6.33 | Subtask | AD1JE40BB001 - Overflow Low Pressure Tank | 2026-06-09T12:01 | 2026-06-09T14:01 | 2026-06-10T13:28 | 2026-06-10T15:28 |  |  | 6 |  |  | 100 | 100 |  |
| 6.34 | Subtask | AD1JR22BB001 - HTF Condensate Tank (Ulage System) | 2026-06-09T02:00 | 2026-06-09T04:00 | 2026-06-10T15:28 | 2026-06-10T17:28 | 2026-06-09T02:00 | 2026-06-09T04:00 | 6 |  |  | 100 | 100 |  |
| 6.35 | Subtask | AF1JR50BB001 - PSV Discharge (Ulage System) | 2026-06-09T19:00 | 2026-06-09T21:00 | 2026-06-11T08:28 | 2026-06-11T10:28 | 2026-06-09T19:00 | 2026-06-09T21:00 | 6 |  |  | 100 | 100 |  |
| 6.36 | Subtask | AD1JR42BB001 - VOC condensate (Ullage System) | 2026-06-09T21:00 | 2026-06-09T23:00 | 2026-06-11T10:28 | 2026-06-11T12:28 | 2026-06-09T21:00 | 2026-06-09T23:00 | 6 |  |  | 100 | 100 |  |

| id | type | name | start | finish | baselineStart | baselineFinish | actualStart | actualFinish | parent | pctComplete | expectedPct | group |
| --- | --- | --- | --- | --- | --- | --- | --- | --- | --- | --- | --- | --- |
| 6.37 | Subtask | AF1LCC10BC001 - LP Heater 1 | 2026-06-05T12:00 | 2026-06-05T12:15 | 2026-06-11T12:28 | 2026-06-11T12:43 | 2026-06-05T12:00 | 2026-06-05T12:15 | 6 | 100 | 100 |  |
| 6.38 | Subtask | AF1LCC10BC002 - LP 1 Level Tank | 2026-06-06T15:00 | 2026-06-06T15:15 | 2026-06-11T12:43 | 2026-06-11T13:43 | 2026-06-06T15:00 | 2026-06-06T15:15 | 6 | 100 | 100 |  |
| 6.39 | Subtask | AF1LCC20BC001 - LP Heater 2 | 2026-06-05T12:15 | 2026-06-05T12:30 | 2026-06-11T13:43 | 2026-06-11T13:43 | 2026-06-05T12:15 | 2026-06-05T12:30 | 6 | 100 | 100 |  |
| 6.40 | Subtask | AF1LCC20BC002 - LP 2 Level Tank | 2026-06-09T07:00 | 2026-06-09T07:15 | 2026-06-11T13:43 | 2026-06-11T13:58 | 2026-06-09T07:00 |  | 6 | 100 | 100 |  |
| 6.41 | Subtask | AF1LCC30BC001 - LP Heater 3 | 2026-06-05T12:30 | 2026-06-05T12:45 | 2026-06-11T13:58 | 2026-06-11T14:13 | 2026-06-05T12:30 | 2026-06-05T12:45 | 6 | 100 | 100 |  |
| 6.42 | Subtask | AF1LCC20BC002 - LP 3 Level Tank | 2026-06-06T15:15 | 2026-06-06T15:30 | 2026-06-12T05:13 | 2026-06-12T06:13 | 2026-06-06T15:15 | 2026-06-06T15:30 | 6 | 100 | 100 |  |
| 6.43 | Subtask | AF1LCC50BC001 - HP Heater 5 | 2026-06-05T12:45 | 2026-06-05T13:00 | 2026-06-12T06:13 | 2026-06-12T06:13 | 2026-06-05T12:45 | 2026-06-05T13:00 | 6 | 100 | 100 |  |
| 6.44 | Subtask | AF1LCC20BC002 - HP 5 Level Tank | 2026-06-05T13:00 | 2026-06-05T14:00 | 2026-06-12T06:13 | 2026-06-12T07:13 |  |  | 6 | 100 | 100 |  |
| 6.45 | Subtask | AF1LCC60BC001 - HP Heater 6 | 2026-06-05T13:00 | 2026-06-05T13:00 | 2026-06-12T07:13 | 2026-06-12T07:13 | 2026-06-05T13:00 | 2026-06-05T13:00 | 6 | 100 | 100 |  |
| 6.46 | Subtask | AF1LCC60BC002 - HP 6 Level Tank | 2026-06-06T15:45 | 2026-06-06T16:00 | 2026-06-12T07:13 | 2026-06-12T08:13 | 2026-06-06T15:45 | 2026-06-06T16:00 | 6 | 100 | 100 |  |
| 6.47 | Subtask | AF1LEV50BB001 - Mist Eliminator | 2026-06-04T07:00 | 2026-06-08T11:00 | 2026-06-12T08:13 | 2026-06-12T09:13 | 2026-06-04T07:00 | 2026-06-08T11:00 | 6 | 100 | 100 |  |
| 6.48 | Subtask | AF1HAN01BB001 - HP Continuous Drain Tank | 2026-06-04T07:00 | 2026-06-07T00:00 | 2026-06-12T09:13 | 2026-06-12T09:13 | 2026-06-04T07:00 | 2026-06-07T00:00 | 6 | 100 | 100 |  |
| 6.49 | Subtask | AF1HAN4001BB001 - LP Continuous Drain Tank | 2026-06-04T07:00 | 2026-06-07T00:00 | 2026-06-12T09:13 | 2026-06-12T09:13 | 2026-06-04T07:00 | 2026-06-07T00:00 | 6 | 100 | 100 |  |
| 6.50 | Subtask | AD1JE30BB001 - Overflow High Pressure Tank | 2026-06-06T00:00 | 2026-06-09T15:00 | 2026-06-12T09:13 | 2026-06-12T10:13 | 2026-06-06T00:00 | 2026-06-09T15:00 | 6 | 100 | 100 |  |
| 6.51 | Subtask | AD1JE20BB001 - Expansion Tank | 2026-06-06T00:00 | 2026-06-09T15:00 | 2026-06-13T01:13 | 2026-06-13T02:13 | 2026-06-06T00:00 | 2026-06-09T15:00 | 6 | 100 | 100 |  |
| 6.52 | Subtask | AF1WSX10BB001 - Salt Drain Tank | 2026-06-11T20:00 | 2026-06-11T21:00 | 2026-06-13T02:13 | 2026-06-13T03:13 |  |  | 6 | 100 | 100 |  |
| 6.53 | Subtask | AF1EG16BB001 - Fuel Oil Tank | 2026-06-11T21:00 | 2026-06-11T22:00 | 2026-06-13T03:13 | 2026-06-13T04:13 |  |  | 6 | 100 | 100 |  |
| 6.54 | Subtask | AF1HAD10AC001 - Evaporator | 2026-06-11T22:00 | 2026-06-11T23:00 | 2026-06-13T04:13 | 2026-06-13T05:13 |  |  | 6 | 100 | 100 |  |
| 6.55 | Subtask | AF1HAD20AC001 - Evaporator | 2026-06-11T23:00 | 2026-06-12T00:00 | 2026-06-13T05:13 | 2026-06-13T06:13 |  |  | 6 | 100 | 100 |  |
| 6.56 | Subtask | AF1HAF10AC001 - Superheater | 2026-06-12T00:00 | 2026-06-12T01:00 | 2026-06-13T06:13 | 2026-06-13T07:13 |  |  | 6 | 100 | 100 |  |
| 6.57 | Subtask | AFHAF20AC001 - Superheater | 2026-06-12T01:00 | 2026-06-12T02:00 | 2026-06-13T07:13 | 2026-06-13T08:13 |  |  | 6 | 100 | 100 |  |
| 6.58 | Subtask | AF1HAG10AA001 - Reheater | 2026-06-12T02:00 | 2026-06-12T03:00 | 2026-06-13T08:13 | 2026-06-13T09:13 |  |  | 6 | 100 | 100 |  |
| 6.59 | Subtask | AF1HAG20AA001 - Reheater | 2026-06-12T03:00 | 2026-06-12T04:00 | 2026-06-13T09:13 | 2026-06-13T10:13 |  |  | 6 | 100 | 100 |  |
| 6.60 | Subtask | AD1JF06BG001 - HTF Boiler | 2026-06-12T19:00 | 2026-06-12T20:00 | 2026-06-14T01:13 | 2026-06-14T02:13 |  |  | 6 | 100 | 100 |  |
| 6.61 | Subtask | AD1JF05BG001 - HTF Boiler | 2026-06-12T20:00 | 2026-06-12T21:00 | 2026-06-14T02:13 | 2026-06-14T03:13 |  |  | 6 | 100 | 100 |  |
| 6.62 | Subtask | AF1JE08AT001 - Overflow Pump Filter | 2026-06-12T21:00 | 2026-06-12T22:00 | 2026-06-14T03:13 | 2026-06-14T04:13 |  |  | 6 | 100 | 100 |  |
| 6.63 | Subtask | AF1JE10AT001 - Overflow Pump Filter | 2026-06-12T22:00 | 2026-06-12T23:00 | 2026-06-14T04:13 | 2026-06-14T05:13 |  |  | 6 | 100 | 100 |  |
| 6.64 | Subtask | AF1JR20BC001 - Ullage Stage 2 Heat Exchanger | 2026-06-06T00:00 | 2026-06-06T00:00 | 2026-06-14T05:13 | 2026-06-14T05:13 | 2026-06-06T00:00 | 2026-06-06T00:00 | 6 | 100 | 100 |  |
| 6.65 | Subtask | AF1JR40BC001 - Ullage Stage 2 Heat Exchanger | 2026-06-06T00:00 | 2026-06-06T00:00 | 2026-06-14T05:13 | 2026-06-14T05:13 | 2026-06-06T00:00 | 2026-06-06T00:00 | 6 | 100 | 100 |  |
| 6.66 | Subtask | AF1GA18BB001 - Hydrostatic Tank | 2026-06-06T00:00 | 2026-06-06T02:00 | 2026-06-14T05:13 | 2026-06-14T07:13 |  |  | 6 | 100 | 100 |  |
| 6.67 | Subtask | AF1GA56BB001 - Hydrostatic Tank | 2026-06-06T16:00 | 2026-06-06T19:00 | 2026-06-14T21:13 | 2026-06-15T00:13 |  |  | 6 | 100 | 100 |  |
| 6.68 | Subtask | MAV36BB010 - FFS Turbine Accumulator | 2026-06-07T00:00 | 2026-06-07T00:00 | 2026-06-15T00:13 | 2026-06-15T00:13 | 2026-06-07T00:00 | 2026-06-07T00:00 | 6 | 100 | 100 |  |
| 6.69 | Subtask | MAV35BB010 - Control Oil Pressure Accumulator | 2026-06-07T00:00 | 2026-06-07T03:00 | 2026-06-15T00:13 | 2026-06-15T03:13 |  |  | 6 |  |  |  |
| 7 | MAIN TASK | Auma - Services of Actuators | 2026-06-04T07:00 | 2026-06-12T06:00 | 2026-06-04T07:00 | 2026-06-11T16:00 | 2026-06-04T07:00 |  |  |  |  | BOP |
| 7.1 | Subtask | HAH33AA151 | 2026-06-04T07:00 | 2026-06-04T16:00 | 2026-06-04T07:00 | 2026-06-04T16:00 | 2026-06-04T07:00 | 2026-06-04T16:00 | 7 | 100 |  |  |
| 7.2 | Subtask | HAH13AA151 | 2026-06-04T07:00 | 2026-06-04T16:00 | 2026-06-04T16:00 | 2026-06-04T17:30 | 2026-06-04T07:00 | 2026-06-04T16:00 | 7 | 100 |  |  |
| 7.3 | Subtask | HAF10AA152 | 2026-06-04T07:00 | 2026-06-04T16:00 | 2026-06-04T17:30 | 2026-06-04T19:00 | 2026-06-04T07:00 | 2026-06-04T16:00 | 7 |  |  |  |
| 7.4 | Subtask | HAA20AA151 | 2026-06-04T07:00 | 2026-06-04T16:00 | 2026-06-04T19:00 | 2026-06-04T19:00 | 2026-06-04T07:00 | 2026-06-04T16:00 | 7 |  |  |  |
| 7.5 | Subtask | Transport to Nuffield, Springs | 2026-06-05T07:00 | 2026-06-05T19:00 | 2026-06-05T07:00 | 2026-06-05T19:00 | 2026-06-05T07:00 | 2026-06-05T19:00 | 7 |  |  |  |
| 7.6 | Subtask | Service of Actuators | 2026-06-06T07:00 | 2026-06-08T16:00 | 2026-06-06T07:00 | 2026-06-09T07:00 | 2026-06-06T07:00 | 2026-06-08T16:00 | 7 |  |  |  |
| 7.7 | Subtask | Transport back to site | 2026-06-09T07:00 | 2026-06-10T09:00 | 2026-06-09T07:00 | 2026-06-09T19:00 | 2026-06-09T07:00 | 2026-06-10T09:00 | 7 |  |  |  |
| 7.8 | Subtask | Replace actuators | 2026-06-10T21:00 | 2026-06-11T09:00 | 2026-06-10T07:00 | 2026-06-10T19:00 |  |  | 7 |  |  |  |
| 7.9 | Subtask | HAH36AA151 - Replace screen card | 2026-06-11T21:00 | 2026-06-12T00:00 | 2026-06-11T07:00 | 2026-06-11T10:00 |  |  | 7 |  |  |  |
| 7.10 | Subtask | HAG20AA152 - Replace screen card | 2026-06-12T00:00 | 2026-06-12T03:00 | 2026-06-11T10:00 | 2026-06-11T13:00 |  |  | 7 |  |  |  |
| 7.11 | Subtask | HAG10AA152 - Replace screen card | 2026-06-12T03:00 | 2026-06-12T06:00 | 2026-06-11T13:00 | 2026-06-11T16:00 |  |  | 7 |  |  |  |
| 8 | MAIN TASK | VEGA-LP Overflow Tank Level Transmitter - AF1JE_40CL001 | 2026-06-03T19:00 | 2026-06-12T20:00 | 2026-06-03T19:00 | 2026-06-12T20:00 |  |  |  |  |  | BOP |
| 8.1 | Subtask | Draining (Night before) | 2026-06-03T19:00 | 2026-06-04T04:00 | 2026-06-03T19:00 | 2026-06-04T04:00 |  |  | 8 |  |  |  |
| 8.2 | Subtask | Open Manhole for inspections | 2026-06-04T04:00 | 2026-06-04T08:00 | 2026-06-04T04:00 | 2026-06-04T08:00 |  |  | 8 |  |  |  |
| 8.3 | Subtask | Removal | 2026-06-04T04:00 | 2026-06-04T12:00 | 2026-06-04T04:00 | 2026-06-04T12:00 |  |  | 8 |  |  |  |
| 8.4 | Subtask | Transport to Lenseria | 2026-06-05T00:00 | 2026-06-05T12:00 | 2026-06-05T00:00 | 2026-06-05T12:00 |  |  | 8 |  |  |  |
| 8.5 | Subtask | Inspections and repairs | 2026-06-06T00:00 | 2026-06-11T00:00 | 2026-06-06T00:00 | 2026-06-11T00:00 |  |  | 8 |  |  |  |
| 8.6 | Subtask | Transport to site | 2026-06-11T00:00 | 2026-06-11T12:00 | 2026-06-11T00:00 | 2026-06-11T12:00 |  |  | 8 |  |  |  |
| 8.7 | Subtask | Replace | 2026-06-12T00:00 | 2026-06-12T08:00 | 2026-06-12T00:00 | 2026-06-12T08:00 |  |  | 8 |  |  |  |
| 8.8 | Subtask | Recovery | 2026-06-12T08:00 | 2026-06-12T20:00 | 2026-06-12T08:00 | 2026-06-12T20:00 |  |  | 8 |  |  |  |
| 9 | MAIN TASK | Enserve - Refurbishment of Valves | 2026-06-01T19:00 | 2026-06-13T10:48 | 2026-06-01T19:00 | 2026-06-17T22:15 | 2026-06-01T19:00 |  |  |  |  | BOP |
| 9.1 | Subtask | Overflow NRV AF1JE11AP001 - Isolate & Draining (Night) | 2026-06-01T19:00 | 2026-06-02T03:00 | 2026-06-01T19:00 | 2026-06-02T03:00 | 2026-06-01T19:00 | 2026-06-02T03:00 | 9 |  |  |  |
| 9.2 | Subtask | AF1JE11AP001 - Cut | 2026-06-02T09:00 | 2026-06-03T11:00 | 2026-06-02T11:00 | 2026-06-03T11:00 | 2026-06-02T09:00 | 2026-06-03T11:00 | 9 |  |  |  |
| 9.3 | Subtask | AF1JE11AP001 - Replace | 2026-06-03T11:00 | 2026-06-06T00:00 | 2026-06-04T03:00 | 2026-06-06T00:00 | 2026-06-03T11:00 | 2026-06-06T00:00 | 9 |  |  |  |
| 9.4 | Subtask | AF1JE11AP001 - AIA Inspections | 2026-06-06T00:00 | 2026-06-06T00:00 | 2026-06-06T00:00 | 2026-06-06T00:00 | 2026-06-06T00:00 | 2026-06-06T00:00 | 9 |  |  |  |
| 9.5 | Subtask | PGB pumps suction line PSV AF1PGB80AA201 - Remove from plant | 2026-06-08T10:00 | 2026-06-08T11:00 | 2026-06-03T19:00 | 2026-06-03T22:00 | 2026-06-08T10:00 | 2026-06-08T11:00 | 9 |  |  |  |
| 9.6 | Subtask | PGB pumps suction line PSV - Disassemble & Clean | 2026-06-08T11:00 | 2026-06-09T10:00 | 2026-06-03T22:00 | 2026-06-03T22:45 | 2026-06-08T11:00 | 2026-06-09T10:00 | 9 |  |  |  |
| 9.7 | Subtask | PGB pumps suction line PSV - Assess & Measure soft spares | 2026-06-09T10:00 | 2026-06-09T11:00 | 2026-06-03T22:45 | 2026-06-03T23:00 | 2026-06-09T10:00 | 2026-06-09T11:00 | 9 |  |  |  |
| 9.8 | Subtask | PGB pumps suction line PSV - Lapping of seats | 2026-06-09T11:00 | 2026-06-09T19:00 | 2026-06-03T23:00 | 2026-06-04T07:00 | 2026-06-09T11:00 |  | 9 |  |  |  |
| 9.9 | Subtask | PGB pumps suction line PSV - Replace | 2026-06-10T07:00 | 2026-06-10T10:00 | 2026-06-04T19:00 | 2026-06-04T22:00 |  |  | 9 |  |  |  |
| 9.10 | Subtask | AF1HAF20AA502 - Remove valve / Welding | 2026-06-04T07:00 | 2026-06-05T08:00 | 2026-06-04T07:00 | 2026-06-05T08:00 | 2026-06-04T07:00 | 2026-06-05T08:00 | 9 |  |  |  |
| 9.11 | Subtask | AF1HAF10AA501 - Disassemble & Clean | 2026-06-06T00:00 | 2026-06-06T00:00 | 2026-06-06T00:00 | 2026-06-06T00:00 | 2026-06-06T00:00 | 2026-06-06T00:00 | 9 |  |  |  |
| 9.12 | Subtask | AF1HAF10AA502 - Close Valve | 2026-06-09T07:00 | 2026-06-10T07:00 | 2026-06-09T07:00 | 2026-06-10T07:00 |  |  | 9 |  |  |  |
| 9.13 | Subtask | HP header sealing steam PRV AF1MAW15AA201 | 2026-06-03T08:00 | 2026-06-04T16:00 | 2026-06-10T07:00 | 2026-06-11T08:15 | 2026-06-03T08:00 | 2026-06-04T16:00 | 9 |  |  |  |
| 9.14 | Subtask | SSG evaporator 1 PRV (AF1HAD10AA201/202/203) | 2026-06-06T00:00 | 2026-06-11T18:00 | 2026-06-11T22:15 | 2026-06-15T10:15 | 2026-06-06T00:00 |  | 9 |  |  |  |
| 9.15 | Subtask | SSG feedwater NRV AF1HAA10AA503 - Refurbishment | 2026-06-06T00:00 | 2026-06-12T20:24 | 2026-06-15T22:15 | 2026-06-16T22:15 | 2026-06-06T00:00 |  | 9 |  |  |  |

| id | type | name | start | finish | baselineStart | baselineFinish | actualStart | actualFinish | parent | pctComplete | group |
| --- | --- | --- | --- | --- | --- | --- | --- | --- | --- | --- | --- |
| 9.16 | Subtask | SSG feedwater NRV AF1HAA20AA503 - Refurbishment | 2026-06-06T00:00 | 2026-06-13T10:48 | 2026-06-16T22:15 | 2026-06-17T22:15 | 2026-06-06T00:00 |  | 9 |  |  |
| 10 | MAIN TASK | Fire Equip - Execution of SBX-9 and SBX-8 (Removal of Cylinders) | 2026-06-04T07:00 | 2026-06-19T07:00 | 2026-06-04T07:00 | 2026-06-17T11:00 | 2026-06-04T07:00 |  |  |  |  |
| 10.1 | Subtask | SBX-9 Minor non-conformances | 2026-06-04T07:00 | 2026-06-04T11:00 | 2026-06-04T07:00 | 2026-06-04T11:00 | 2026-06-04T07:00 | 2026-06-04T11:00 | 10 |  |  |
| 10.2 | Subtask | SBX-8 Removal of gas suppression cylinders | 2026-06-04T07:00 | 2026-06-04T11:00 | 2026-06-04T07:00 | 2026-06-04T11:00 | 2026-06-04T07:00 | 2026-06-04T11:00 | 10 |  |  |
| 10.3 | Subtask | Execution of SBX-8 reinstall of gas suppression cylinders | 2026-06-15T07:00 | 2026-06-19T07:00 | 2026-06-13T11:00 | 2026-06-17T11:00 |  |  | 10 |  |  |
| 10.4 | Subtask | Service gas suppression systems (SLA) | 2026-06-15T07:00 | 2026-06-19T07:00 | 2026-06-13T11:00 | 2026-06-17T11:00 |  |  | 10 |  |  |
| 11 | MAIN TASK | BI Engineering | 2026-05-31T22:00 | 2026-06-16T04:00 | 2026-06-02T07:00 | 2026-06-17T10:15 | 2026-05-31T22:00 |  |  |  |  |
| 11.1 | Subtask | MAW20AA181 - Valve passing | 2026-05-31T22:00 | 2026-06-01T01:00 | 2026-06-02T07:00 | 2026-06-02T07:00 | 2026-05-31T22:00 | 2026-06-01T01:00 | 11 |  |  |
| 11.2 | Subtask | MAW20AA182 - Valve passing | 2026-06-01T01:00 | 2026-06-01T04:00 | 2026-06-02T07:00 | 2026-06-02T10:00 | 2026-06-01T01:00 | 2026-06-01T04:00 | 11 |  |  |
| 11.3 | Subtask | HAN15AA181 - Actuator leaking | 2026-06-01T08:00 | 2026-06-01T15:00 | 2026-06-02T10:00 | 2026-06-02T17:00 | 2026-06-01T08:00 | 2026-06-01T15:00 | 11 |  |  |
| 11.4 | Subtask | HAN11AA181 - Actuator Loose, new mounting required | 2026-06-01T08:00 | 2026-06-01T15:00 | 2026-06-02T17:00 | 2026-06-02T17:18 | 2026-06-01T08:00 | 2026-06-01T15:00 | 11 |  |  |
| 11.5 | Subtask | Ship to BI Engineering JHB | 2026-06-02T07:00 | 2026-06-03T09:00 | 2026-06-03T05:18 | 2026-06-04T07:18 | 2026-06-02T07:00 | 2026-06-03T09:00 | 11 |  |  |
| 11.6 | Subtask | Repair Valves | 2026-06-03T09:00 | 2026-06-10T00:00 | 2026-06-04T22:18 | 2026-06-10T22:18 | 2026-06-03T09:00 |  | 11 |  |  |
| 11.7 | Subtask | Ship valves back to Site + Replace | 2026-06-10T00:00 | 2026-06-12T09:00 | 2026-06-10T22:18 | 2026-06-13T07:18 |  |  | 11 |  |  |
| 11.8 | Subtask | Site Establishment - Complete site induction | 2026-06-04T08:00 | 2026-06-04T09:00 | 2026-06-04T08:00 | 2026-06-04T09:00 | 2026-06-04T08:00 | 2026-06-04T09:00 | 11 |  |  |
| 11.9 | Subtask | Strip, Clean & Repair HP Valve AF1LBP10AA001 | 2026-06-06T00:00 | 2026-06-06T00:00 | 2026-06-06T00:00 | 2026-06-06T12:00 | 2026-06-06T00:00 | 2026-06-06T00:00 | 11 |  |  |
| 11.10 | Subtask | Strip, Clean & Repair LP Valve AF1LBS10AA001 | 2026-06-08T07:00 | 2026-06-08T09:00 | 2026-06-08T14:00 | 2026-06-08T16:00 | 2026-06-08T07:00 | 2026-06-08T09:00 | 11 |  |  |
| 11.11 | Subtask | Replace packing - HAA10AA001 | 2026-06-05T07:00 | 2026-06-09T10:00 | 2026-06-10T00:15 | 2026-06-10T08:15 | 2026-06-05T07:00 |  | 11 |  |  |
| 11.12 | Subtask | Replace packing - HAA20AA001 | 2026-06-05T07:00 | 2026-06-10T06:00 | 2026-06-11T00:15 | 2026-06-11T08:15 | 2026-06-05T07:00 |  | 11 |  |  |
| 11.13 | Subtask | Replace packing - HAA10AA002 | 2026-06-05T07:00 | 2026-06-11T02:00 | 2026-06-12T00:15 | 2026-06-12T08:15 | 2026-06-05T07:00 |  | 11 |  |  |
| 11.14 | Subtask | Replace packing - HAA20AA002 | 2026-06-05T07:00 | 2026-06-12T02:00 | 2026-06-13T00:15 | 2026-06-13T08:15 | 2026-06-05T07:00 |  | 11 |  |  |
| 12 | MAIN TASK | SIEMENS ENERGY - Unloaded side thrust bearing sensor replacement | 2026-06-10T07:00 | 2026-06-13T03:00 | 2026-06-10T07:00 | 2026-06-13T03:00 |  |  |  |  | BOP |
| 12.1 | Subtask | Safety Induction | 2026-06-10T07:00 | 2026-06-10T08:00 | 2026-06-10T07:00 | 2026-06-10T08:00 |  |  | 12 |  |  |
| 12.2 | Subtask | Site Establishment | 2026-06-10T08:00 | 2026-06-10T10:00 | 2026-06-10T08:00 | 2026-06-10T10:00 |  |  | 12 |  |  |
| 12.3 | Subtask | PTW | 2026-06-10T08:00 | 2026-06-10T09:00 | 2026-06-10T08:00 | 2026-06-10T09:00 |  |  | 12 |  |  |
| 12.4 | Subtask | Remove Barring Gear & Front Pedestal Outer Instruments | 2026-06-10T09:00 | 2026-06-10T12:00 | 2026-06-10T09:00 | 2026-06-10T12:00 |  |  | 12 |  |  |
| 12.5 | Subtask | Loosen Barring Gear Hydraulic Piping | 2026-06-11T07:00 | 2026-06-11T08:00 | 2026-06-11T07:00 | 2026-06-11T08:00 |  |  | 12 |  |  |
| 12.6 | Subtask | Loosen & Remove Coupling Guard Top Half | 2026-06-11T08:00 | 2026-06-11T09:00 | 2026-06-11T08:00 | 2026-06-11T09:00 |  |  | 12 |  |  |
| 12.7 | Subtask | Loosen & Remove Front Pedestal Top Cover | 2026-06-11T09:00 | 2026-06-11T12:00 | 2026-06-11T09:00 | 2026-06-11T12:00 |  |  | 12 |  |  |
| 12.8 | Subtask | Remove Faulty Axial Displacement Probe | 2026-06-11T12:00 | 2026-06-11T13:00 | 2026-06-11T12:00 | 2026-06-11T13:00 |  |  | 12 |  |  |
| 12.9 | Subtask | Install New Axial Displacement Probe | 2026-06-11T13:00 | 2026-06-11T14:00 | 2026-06-11T13:00 | 2026-06-11T14:00 |  |  | 12 |  |  |
| 12.10 | Subtask | Set Turbine On Thrust & Set Axial Displacement Probe | 2026-06-11T14:00 | 2026-06-11T18:00 | 2026-06-11T14:00 | 2026-06-11T18:00 |  |  | 12 |  |  |
| 12.11 | Subtask | Replace Front Pedestal Top Cover | 2026-06-12T07:00 | 2026-06-12T11:00 | 2026-06-12T07:00 | 2026-06-12T11:00 |  |  | 12 |  |  |
| 12.12 | Subtask | Replace Coupling Guard Top Half | 2026-06-12T11:00 | 2026-06-12T12:00 | 2026-06-12T11:00 | 2026-06-12T12:00 |  |  | 12 |  |  |
| 12.13 | Subtask | Replace Barring Gear Hydraulic Piping | 2026-06-12T12:00 | 2026-06-12T13:00 | 2026-06-12T12:00 | 2026-06-12T13:00 |  |  | 12 |  |  |
| 12.14 | Subtask | Replace Pedestal & Barring Gear Instrumentation | 2026-06-12T12:00 | 2026-06-12T14:00 | 2026-06-12T12:00 | 2026-06-12T14:00 |  |  | 12 |  |  |
| 12.15 | Subtask | Clear PTW | 2026-06-12T14:00 | 2026-06-12T15:00 | 2026-06-12T14:00 | 2026-06-12T15:00 |  |  | 12 |  |  |
| 12.16 | Subtask | Place Unit on Barring | 2026-06-12T15:00 | 2026-06-12T15:00 | 2026-06-12T15:00 | 2026-06-12T15:00 |  |  | 12 |  |  |
| 12.17 | Subtask | Travel Back to Home Base | 2026-06-12T15:00 | 2026-06-13T03:00 | 2026-06-12T15:00 | 2026-06-13T03:00 |  |  | 12 |  |  |
| 13 | MAIN TASK | Steam House - Pressure test | 2026-06-09T08:00 | 2026-06-13T15:00 | 2026-06-09T07:00 | 2026-06-13T14:00 | 2026-06-09T08:00 |  |  |  | BOP |
| 13.1 | Subtask | Complete safety induction | 2026-06-09T08:00 | 2026-06-09T10:00 | 2026-06-09T07:00 | 2026-06-09T09:00 | 2026-06-09T08:00 | 2026-06-09T10:00 | 13 |  |  |
| 13.2 | Subtask | Assemble pressure test equipment | 2026-06-09T10:00 | 2026-06-09T17:00 | 2026-06-09T09:00 | 2026-06-09T16:00 | 2026-06-09T10:00 |  | 13 |  |  |
| 13.3 | Subtask | Pressure test boiler | 2026-06-10T08:00 | 2026-06-13T08:00 | 2026-06-10T07:00 | 2026-06-13T07:00 |  |  | 13 |  |  |
| 13.4 | Subtask | Pressure test air receiver 10 | 2026-06-10T08:00 | 2026-06-13T08:00 | 2026-06-10T07:00 | 2026-06-13T07:00 |  |  | 13 |  |  |
| 13.5 | Subtask | Pressure test air receiver 15 | 2026-06-10T08:00 | 2026-06-13T08:00 | 2026-06-10T07:00 | 2026-06-13T07:00 |  |  | 13 |  |  |
| 13.6 | Subtask | Disassemble pressure test equipment | 2026-06-13T08:00 | 2026-06-13T15:00 | 2026-06-13T07:00 | 2026-06-13T14:00 |  |  | 13 |  |  |
| 14 | MAIN TASK | HyDac - Lube oil tank | 2026-06-08T09:00 | 2026-06-19T16:00 | 2026-06-08T09:00 | 2026-06-18T18:00 | 2026-06-08T09:00 |  |  |  |  |
| 14.1 | Subtask | Drain 10 000l tank into provided tanks | 2026-06-08T09:00 | 2026-06-09T15:00 | 2026-06-08T09:00 | 2026-06-08T18:00 | 2026-06-08T09:00 | 2026-06-09T15:00 | 14 |  |  |
| 14.2 | Subtask | Inspect tank to determine if cleaning needed | 2026-06-10T07:00 | 2026-06-10T09:00 | 2026-06-09T09:00 | 2026-06-09T11:00 | 2026-06-10T07:00 |  | 14 |  |  |
| 14.3 | Subtask | Clean tank if needed | 2026-06-10T09:00 | 2026-06-10T16:00 | 2026-06-09T11:00 | 2026-06-09T18:00 |  |  | 14 |  |  |
| 14.4 | Subtask | Fill 10000l reservoir with new oil | 2026-06-11T07:00 | 2026-06-11T16:00 | 2026-06-10T09:00 | 2026-06-10T18:00 |  |  | 14 |  |  |
| 14.5 | Subtask | Blank off and loop pipes to circulate oil | 2026-06-12T07:00 | 2026-06-18T16:00 | 2026-06-11T09:00 | 2026-06-17T18:00 |  |  | 14 |  |  |
| 14.6 | Subtask | Remove loop hoses and restore system | 2026-06-19T07:00 | 2026-06-19T16:00 | 2026-06-18T09:00 | 2026-06-18T18:00 |  |  | 14 |  |  |
| 15 | MAIN TASK | Afrox | 2026-06-09T08:00 | 2026-06-11T19:00 | 2026-06-10T07:00 | 2026-06-11T19:00 | 2026-06-09T08:00 |  |  |  | BOP |
| 15.1 | Subtask | Induction | 2026-06-09T08:00 | 2026-06-09T10:00 | 2026-06-10T07:00 | 2026-06-10T09:00 | 2026-06-09T08:00 | 2026-06-09T10:00 | 15 |  |  |
| 15.2 | Subtask | Vessel T81A - Replace safety valves on supply line | 2026-06-10T09:00 | 2026-06-10T13:00 | 2026-06-10T09:00 | 2026-06-10T13:00 |  |  | 15 |  |  |
| 15.3 | Subtask | Vessel T81B - Replace safety valves on supply line | 2026-06-10T13:00 | 2026-06-10T17:00 | 2026-06-10T13:00 | 2026-06-10T17:00 |  |  | 15 |  |  |
| 15.4 | Subtask | Vessel T81C - Replace safety valves on supply line and PGB suction line | 2026-06-11T07:00 | 2026-06-11T19:00 | 2026-06-11T07:00 | 2026-06-11T19:00 |  |  | 15 |  |  |
| 15.5 | Subtask | AF1QJA93AA501 - Fault finding on offloading valve | 2026-06-11T17:00 | 2026-06-11T18:00 | 2026-06-11T17:00 | 2026-06-11T18:00 |  |  | 15 |  |  |
| 15.6 | Subtask | Nitrogen vaporiser 3 - external leak | 2026-06-11T18:00 | 2026-06-11T19:00 | 2026-06-11T18:00 | 2026-06-11T19:00 |  |  | 15 |  |  |
| 16 | MAIN TASK | 132kV Isolated / 6.6 Switchgear Maintenance | 2026-06-05T09:00 | 2026-06-13T13:30 | 2026-06-05T09:00 | 2026-06-12T17:00 | 2026-06-05T09:00 |  |  |  |  |
| 16.1 | Subtask | 132kV Isolations | 2026-06-05T09:00 | 2026-06-05T10:15 | 2026-06-05T09:00 | 2026-06-05T10:15 | 2026-06-05T09:00 | 2026-06-05T10:15 | 16 |  |  |
| 16.2 | Subtask | 132kV De-isolations | 2026-06-13T12:30 | 2026-06-13T13:30 | 2026-06-12T16:00 | 2026-06-12T17:00 |  |  | 16 |  |  |
| 16.3 | Subtask | Eskom Outage / Paulputs Substation Shutdown | 2026-06-08T07:00 | 2026-06-12T16:00 | 2026-06-08T08:00 | 2026-06-12T16:00 | 2026-06-08T07:00 |  | 16 |  |  |
| 16.4 | Subtask | MEB AF1BFT10 - Switchgear Maintenance | 2026-06-05T10:15 | 2026-06-13T12:30 | 2026-06-05T09:00 | 2026-06-05T18:30 | 2026-06-05T10:15 | 2026-06-13T12:30 | 16 |  |  |
| 16.5 | Subtask | AF1BB02 Incomer Service | 2026-06-07T07:00 | 2026-06-07T16:00 | 2026-06-05T09:00 | 2026-06-05T11:00 | 2026-06-07T07:00 | 2026-06-07T16:00 | 16 |  |  |
| 16.6 | Subtask | Main BAT10 - Switchgear Maintenance | 2026-06-06T00:00 | 2026-06-07T01:00 | 2026-06-06T00:00 | 2026-06-07T01:00 | 2026-06-06T00:00 | 2026-06-07T01:00 | 16 |  |  |
| 16.7 | Subtask | Aux-BBT10 - OLTC TAPCON Service | 2026-06-08T07:00 | 2026-06-09T10:58 | 2026-06-07T01:00 | 2026-06-08T02:00 | 2026-06-08T07:00 | 2026-06-09T10:58 | 16 | 0 |  |
| 16.8 | Subtask | WTP AF1BFT20 - Switchgear Maintenance | 2026-06-07T07:00 | 2026-06-07T13:00 | 2026-06-05T18:30 | 2026-06-06T00:30 | 2026-06-07T07:00 | 2026-06-07T13:00 | 16 |  |  |
| 16.9 | Subtask | ACC AF1BBA30 - Switchgear Maintenance | 2026-06-02T16:00 | 2026-06-02T16:30 | 2026-06-06T00:30 | 2026-06-06T00:45 | 2026-06-02T16:00 | 2026-06-02T16:30 | 16 |  |  |

| id | type | name | start | finish | baselineStart | baselineFinish | actualStart | actualFinish | parent | resources | status | pctComplete | expectedPct | group | subheading |
| --- | --- | --- | --- | --- | --- | --- | --- | --- | --- | --- | --- | --- | --- | --- | --- |
| 16.10 | Subtask | TES AF1BBA40 - Switchgear Maintenance | 2026-06-02T15:30 | 2026-06-02T16:00 | 2026-06-06T00:45 | 2026-06-06T01:00 | 2026-06-02T15:30 | 2026-06-02T16:00 | 16 |  |  |  |  |  |  |
| 16.11 | Subtask | TES AF1BBA50 - Switchgear Maintenance | 2026-06-02T16:30 | 2026-06-02T17:00 | 2026-06-06T01:00 | 2026-06-06T01:30 | 2026-06-02T16:30 | 2026-06-02T17:00 | 16 |  |  |  |  |  |  |
| 16.12 | Subtask | TES-AF1BBA60 - Switchgear Maintenance | 2026-06-02T17:00 | 2026-06-02T17:30 | 2026-06-06T01:30 | 2026-06-06T02:00 | 2026-06-02T17:00 | 2026-06-02T17:30 | 16 |  |  |  |  |  |  |
| 17 | MAIN TASK | HT RAMS - Testing & Maintenance | 2026-06-01T11:00 | 2026-06-07T00:00 | 2026-06-03T08:00 | 2026-06-07T16:24 | 2026-06-01T11:00 |  |  |  |  |  |  |  |  |
| 17.1 | Subtask | 15kV SF6 Vacuum Circuit Breaker | 2026-06-03T08:00 | 2026-06-07T00:00 | 2026-06-03T08:00 | 2026-06-07T00:00 | 2026-06-03T08:00 | 2026-06-07T00:00 | 17 |  |  |  |  |  |  |
| 17.2 | Subtask | 15kV Vacuum Circuit Breaker isolator | 2026-06-03T08:00 | 2026-06-07T00:00 | 2026-06-07T16:00 | 2026-06-07T16:24 | 2026-06-03T08:00 | 2026-06-07T00:00 | 17 |  |  |  |  |  |  |
| 17.3 | Subtask | 132kV SF6 Circuit Breaker | 2026-06-07T00:00 | 2026-06-07T00:00 | 2026-06-07T00:00 | 2026-06-07T00:00 | 2026-06-07T00:00 | 2026-06-07T00:00 | 17 |  |  |  |  |  |  |
| 17.4 | Subtask | 132kV Isolator | 2026-06-07T00:00 | 2026-06-07T00:00 | 2026-06-07T00:00 | 2026-06-07T00:00 | 2026-06-07T00:00 | 2026-06-07T00:00 | 17 |  |  |  |  |  |  |
| 17.5 | Subtask | 132kV, 15kV, 6.6kV Current Transformers | 2026-06-07T00:00 | 2026-06-07T00:00 | 2026-06-07T00:00 | 2026-06-07T00:00 | 2026-06-07T00:00 | 2026-06-07T00:00 | 17 |  |  |  |  |  |  |
| 17.6 | Subtask | 132kV, 15kV, 6.6kV Voltage Transformers | 2026-06-07T00:00 | 2026-06-07T00:00 | 2026-06-07T11:00 | 2026-06-07T11:00 | 2026-06-07T00:00 | 2026-06-07T00:00 | 17 |  |  |  |  |  |  |
| 17.7 | Subtask | Solar Field Switchgear Maintenance | 2026-06-02T12:53 | 2026-06-02T15:30 | 2026-06-06T02:00 | 2026-06-06T04:30 | 2026-06-02T12:53 | 2026-06-02T15:30 | 17 |  |  |  |  |  |  |
| 17.8 | Subtask | Feedwater Switchgear Maintenance | 2026-06-01T11:00 | 2026-06-02T17:45 | 2026-06-06T04:30 | 2026-06-06T05:45 | 2026-06-01T11:00 | 2026-06-02T17:45 | 17 |  |  |  |  |  |  |
| 17.9 | Subtask | HTF Switchgear Maintenance | 2026-06-01T13:00 | 2026-06-02T12:53 | 2026-06-06T05:45 | 2026-06-06T14:38 | 2026-06-01T13:00 |  | 17 |  |  |  |  |  |  |
| 17.10 | Subtask | Bayont Cape - Cleaning of Busbars | 2026-06-08T10:00 | 2026-06-13T07:00 | 2026-06-08T07:00 | 2026-06-14T07:00 | 2026-06-08T10:00 |  | 17 |  |  |  |  |  |  |
| 18 | MAIN TASK | DCS Correctives | 2026-06-01T07:00 | 2026-06-19T07:00 | 2026-06-01T07:00 | 2026-06-19T07:00 | 2026-06-01T07:00 |  |  |  |  |  |  |  |  |
| 18.1 | Subtask | Yokogawa - Site Establishment & Windows Environment | 2026-06-08T10:00 | 2026-06-08T16:00 | 2026-06-08T10:00 | 2026-06-08T17:00 | 2026-06-08T10:00 | 2026-06-08T16:00 | 18 |  |  |  |  |  |  |
| 18.2 | Subtask | Windows environment - Centum patching | 2026-06-09T07:00 | 2026-06-09T16:00 | 2026-06-09T08:00 | 2026-06-09T17:00 | 2026-06-09T07:00 | 2026-06-09T16:00 | 18 |  |  |  |  |  |  |
| 18.3 | Subtask | FCS Inspections | 2026-06-11T08:00 | 2026-06-12T17:00 | 2026-06-11T08:00 | 2026-06-12T17:00 |  |  | 18 |  |  |  |  |  |  |
| 18.4 | Subtask | D20 battery replacement | 2026-06-01T07:00 | 2026-06-04T10:00 | 2026-06-01T07:00 | 2026-06-04T10:00 | 2026-06-01T07:00 | 2026-06-04T10:00 | 18 |  |  |  |  |  |  |
| 18.5 | Subtask | Cleaning of servers and stations | 2026-06-01T07:00 | 2026-06-08T16:00 | 2026-06-04T10:00 | 2026-06-08T17:00 | 2026-06-01T07:00 | 2026-06-08T16:00 | 18 |  |  |  |  |  |  |
| 18.6 | Subtask | Server failover checks | 2026-06-01T07:00 | 2026-06-08T16:00 | 2026-06-04T10:00 | 2026-06-08T17:00 | 2026-06-01T07:00 | 2026-06-08T16:00 | 18 |  |  |  |  |  |  |
| 18.7 | Subtask | Generator signals recovery | 2026-06-08T07:00 | 2026-06-12T16:00 | 2026-06-08T07:00 | 2026-06-12T16:00 |  |  | 18 |  |  |  |  |  |  |
| 18.8 | Subtask | Checking of active simulations | 2026-06-15T07:00 | 2026-06-19T07:00 | 2026-06-15T07:00 | 2026-06-19T07:00 |  |  | 18 |  |  |  |  |  |  |
| 19 | MAIN TASK | Environmental | 2026-05-31T23:00 | 2026-06-13T17:00 | 2026-05-31T23:00 | 2026-06-08T14:00 | 2026-05-31T23:00 |  |  |  |  |  |  |  |  |
| 19.1 | Subtask | Reservoir Cleaning - April Konstruksie | 2026-05-31T23:00 | 2026-06-07T00:00 | 2026-05-31T23:00 | 2026-06-07T00:00 | 2026-05-31T23:00 | 2026-06-07T00:00 | 19 |  |  |  |  |  |  |
| 19.2 | Subtask | Cleaning of heat exchangers | 2026-06-01T09:00 | 2026-06-13T17:00 | 2026-06-01T09:00 | 2026-06-08T14:00 | 2026-06-01T09:00 |  | 19 |  |  |  |  |  |  |
| 19.3 | Subtask | Cleaning of cooling tower | 2026-06-04T07:00 | 2026-06-04T14:16 | 2026-06-04T07:00 | 2026-06-04T14:16 | 2026-06-04T07:00 | 2026-06-04T14:16 | 19 |  |  |  |  |  |  |
| 19.4 | Subtask | Cleaning of raw water tank | 2026-06-03T09:00 | 2026-06-03T12:00 | 2026-06-03T09:00 | 2026-06-03T12:00 | 2026-06-03T09:00 | 2026-06-03T12:00 | 19 |  |  |  |  |  |  |
| 20 | MAIN TASK | Mechanical Correctives | 2026-06-01T14:00 | 2026-06-15T20:00 | 2026-06-02T07:00 | 2026-06-17T07:00 | 2026-06-01T14:00 |  |  |  |  |  |  |  |  |
| 20.1 | Subtask | AF1LBA10CP001 Condensate pot leaking | 2026-06-01T14:00 | 2026-06-04T15:00 | 2026-06-02T07:00 | 2026-06-04T15:00 | 2026-06-01T14:00 | 2026-06-04T15:00 | 20 |  |  |  |  |  |  |
| 20.2 | Subtask | LP Drain Tank - AF1HAN40BB001 | 2026-06-02T09:00 | 2026-06-08T16:00 | 2026-06-05T07:00 | 2026-06-08T16:00 | 2026-06-02T09:00 |  | 20 |  |  |  |  |  |  |
| 20.3 | Subtask | HP Drain Tank - AF1HAN01BB001 | 2026-06-02T09:00 | 2026-06-09T08:00 | 2026-06-05T07:00 | 2026-06-09T08:00 | 2026-06-02T09:00 |  | 20 |  |  |  |  |  |  |
| 20.4 | Subtask | Deaerator - AF1LAB10BB001 | 2026-06-08T07:00 | 2026-06-09T09:00 | 2026-06-05T07:00 | 2026-06-09T09:00 | 2026-06-08T07:00 |  | 20 |  |  |  |  |  |  |
| 20.5 | Subtask | Condensate Tank - AF1LCA01BB001 | 2026-06-04T08:00 | 2026-06-09T10:00 | 2026-06-05T08:00 | 2026-06-09T10:00 | 2026-06-04T08:00 |  | 20 |  |  |  |  |  |  |
| 20.6 | Subtask | Mist eliminator | 2026-06-02T09:00 | 2026-06-09T11:00 | 2026-06-05T09:00 | 2026-06-09T11:00 | 2026-06-02T09:00 |  | 20 |  |  |  |  |  |  |
| 20.7 | Subtask | Continuous Purge Tank - AF1HAH10BB001 | 2026-06-04T08:00 | 2026-06-09T12:00 | 2026-06-05T09:00 | 2026-06-09T12:00 | 2026-06-04T08:00 |  | 20 |  |  |  |  |  |  |
| 20.8 | Subtask | Intermittent Purge Tank - AF1HAH20BB001 | 2026-06-04T08:00 | 2026-06-09T13:00 | 2026-06-05T16:00 | 2026-06-09T13:00 | 2026-06-04T08:00 |  | 20 |  |  |  |  |  |  |
| 20.9 | Subtask | Salt drain tank - leaking | 2026-06-07T05:00 | 2026-06-10T07:00 | 2026-06-07T05:00 | 2026-06-10T07:00 |  |  | 20 |  |  |  |  |  |  |
| 20.10 | Subtask | JS15AA181 Valve - leaking | 2026-06-08T07:00 | 2026-06-08T15:00 | 2026-06-08T07:00 | 2026-06-08T15:00 |  |  | 20 |  |  |  |  |  |  |
| 20.11 | Subtask | SSG Drain valve leak HTF | 2026-06-13T07:00 | 2026-06-14T16:00 | 2026-06-14T07:00 | 2026-06-15T16:00 |  |  | 20 |  |  |  |  |  |  |
| 20.12 | Subtask | Replace steam traps | 2026-06-02T07:00 | 2026-06-03T09:00 | 2026-06-16T07:00 | 2026-06-16T23:00 | 2026-06-02T07:00 | 2026-06-03T09:00 | 20 |  |  |  |  |  |  |
| 20.13 | Subtask | AF1HAF10AA601 Gate valve HO | 2026-06-03T09:00 | 2026-06-03T17:00 | 2026-06-16T23:00 | 2026-06-17T07:00 |  |  | 20 |  |  |  |  |  |  |
| 20.14 | Subtask | Pipe Displaced from Support | 2026-06-12T06:00 | 2026-06-15T20:00 | 2026-06-11T16:00 | 2026-06-15T06:00 |  |  | 20 |  |  |  |  |  |  |
| 21 | MAIN TASK | I&C Correctives | 2026-06-01T13:00 | 2026-06-09T15:00 | 2026-06-03T08:00 | 2026-06-08T16:00 | 2026-06-01T13:00 |  |  |  |  |  |  |  |  |
| 21.1 | Subtask | Replace regulator - QFB10A430 | 2026-06-03T08:00 | 2026-06-03T16:00 | 2026-06-03T08:00 | 2026-06-03T16:00 | 2026-06-03T08:00 | 2026-06-03T16:00 | 21 |  |  |  |  |  |  |
| 21.2 | Subtask | Install actuator - AF1JB01AA102 | 2026-06-01T13:00 | 2026-06-03T20:00 | 2026-06-03T16:00 | 2026-06-04T00:00 | 2026-06-01T13:00 |  | 21 |  |  |  |  |  |  |
| 21.3 | Subtask | Replace regulator - AF1JR80AA001 | 2026-06-02T17:00 | 2026-06-02T18:00 | 2026-06-04T14:00 | 2026-06-04T15:00 | 2026-06-02T17:00 | 2026-06-02T18:00 | 21 |  |  |  |  |  |  |
| 21.4 | Subtask | Replace Thermocouples - AF1MAC10CT040/041/042 | 2026-06-09T07:00 | 2026-06-09T15:00 | 2026-06-08T07:00 | 2026-06-08T08:00 | 2026-06-09T07:00 | 2026-06-09T15:00 | 21 |  |  |  |  |  |  |
| 21.5 | Subtask | Testing of generator water leak detectors | 2026-06-09T07:00 | 2026-06-09T15:00 | 2026-06-08T10:00 | 2026-06-08T16:00 | 2026-06-09T07:00 | 2026-06-09T15:00 | 21 |  |  |  |  |  |  |
| 22 | MAIN TASK | Electrical Correctives / Preventives | 2026-06-03T19:00 | 2026-06-11T09:00 | 2026-06-03T19:00 | 2026-06-09T13:00 | 2026-06-03T19:00 |  |  |  |  |  |  |  |  |
| 22.1 | Subtask | AF1MAV25AD110-M01 - Turbine motor inspection | 2026-06-04T07:00 | 2026-06-04T11:00 | 2026-06-04T07:00 | 2026-06-04T11:00 | 2026-06-04T07:00 |  | 22 |  |  |  |  |  |  |
| 22.2 | Subtask | AF1MAA16AH120 Casing Heater - Faulty | 2026-06-08T10:00 | 2026-06-11T09:00 | 2026-06-08T07:00 | 2026-06-09T13:00 | 2026-06-08T10:00 |  | 22 |  |  |  |  |  |  |
| 22.3 | Subtask | Testing of EPBs in Control room | 2026-06-04T07:00 | 2026-06-04T11:58 | 2026-06-04T11:00 | 2026-06-04T12:03 | 2026-06-04T07:00 |  | 22 |  |  |  |  |  |  |
| 22.4 | Subtask | Install Panel heater | 2026-06-03T19:00 | 2026-06-04T01:00 | 2026-06-03T19:00 | 2026-06-04T01:00 |  |  | 22 |  |  |  |  |  |  |
| 22.5 | Subtask | AF1UBE27GY001 | 2026-06-03T19:00 | 2026-06-03T22:00 | 2026-06-03T19:00 | 2026-06-03T22:00 |  |  | 22 |  |  |  |  |  |  |
| 22.6 | Subtask | AF1UBE31GY001 | 2026-06-03T22:00 | 2026-06-04T01:00 | 2026-06-03T22:00 | 2026-06-04T01:00 |  |  | 22 |  |  |  |  |  |  |
| 23 | MAIN TASK | Solar Field Correctives | 2026-06-01T07:00 | 2026-06-19T07:00 | 2026-06-01T07:00 | 2026-06-19T07:00 | 2026-06-01T07:00 |  |  |  |  |  |  |  |  |
| 23.1 | Subtask | Main pipe structure damage - B44 | 2026-06-09T07:00 | 2026-06-11T07:00 | 2026-06-09T07:00 | 2026-06-11T07:00 |  |  | 23 |  |  |  |  |  |  |
| 23.2 | Subtask | Structural damage - F22 | 2026-06-11T07:00 | 2026-06-13T07:00 | 2026-06-11T07:00 | 2026-06-13T07:00 |  |  | 23 |  |  |  |  |  |  |
| 23.3 | Subtask | Rotate drive axis | 2026-06-13T07:00 | 2026-06-19T07:00 | 2026-06-13T07:00 | 2026-06-19T07:00 |  |  | 23 |  |  |  |  |  |  |
| 23.4 | Subtask | Hydraulic Power Unit Maintenance | 2026-06-02T07:00 | 2026-06-11T15:00 | 2026-06-02T07:00 | 2026-06-11T15:00 | 2026-06-02T07:00 |  | 23 |  |  |  |  |  |  |
| 23.5 | Subtask | Calibration 10% of Solar Field | 2026-06-03T07:00 | 2026-06-12T16:00 | 2026-06-03T07:00 | 2026-06-12T16:00 | 2026-06-03T07:00 |  | 23 |  |  |  |  |  |  |
| 23.6 | Subtask | Graphite | 2026-06-01T07:00 | 2026-06-10T16:00 | 2026-06-01T07:00 | 2026-06-10T16:00 | 2026-06-01T07:00 |  | 23 |  |  |  |  |  |  |
| 24 | MAIN TASK | XINA EVAPORATOR 1&2 Repairs | 2026-05-24T07:00 | 2026-06-30T17:01 | 2025-12-05T07:00 | 2026-06-30T19:00 | 2026-05-24T07:00 |  |  | Kelvion | In progress | 22 | 23 | Kelvion |  |
| 24.1 | Subtask | Mobilze Team | 2026-05-24T07:00 | 2026-06-01T07:01 | 2026-05-24T07:00 | 2026-06-01T07:01 | 2026-05-24T07:00 | 2026-06-01T07:01 | 24 | Kelvion | Complete | 100 | 100 |  |  |
| 24.2 | Subtask | Site Works | 2026-05-26T14:01 | 2026-06-28T14:01 | 2026-05-26T14:01 | 2026-06-26T15:00 | 2026-05-26T14:01 |  | 24 | Kelvion | In progress | 21 | 21 |  | True |
| 24.3 | Subtask | Erect external Scaffolding - By Client | 2026-05-26T14:01 | 2026-05-29T14:01 | 2026-05-26T14:01 | 2026-05-29T14:01 | 2026-05-26T14:01 | 2026-05-29T14:01 | 24 | Kelvion | Complete | 100 | 100 |  |  |
| 24.4 | Subtask | Site Preparation | 2026-05-29T14:01 | 2026-06-02T11:03 | 2026-05-29T14:01 | 2026-06-02T11:03 | 2026-05-29T14:01 | 2026-06-02T11:03 | 24 | Kelvion | Complete | 100 | 100 |  |  |
| 24.5 | Subtask | Install Spark containment | 2026-05-29T14:01 | 2026-05-30T10:01 | 2026-05-29T14:01 | 2026-05-30T10:01 | 2026-05-29T14:01 | 2026-05-30T10:01 | 24 | Kelvion | Complete | 100 | 100 |  |  |
| 24.6 | Subtask | Receive permit to work | 2026-05-30T10:01 | 2026-06-02T11:03 | 2026-05-30T10:01 | 2026-06-02T11:03 | 2026-05-30T10:01 | 2026-06-02T11:03 | 24 | Kelvion | Complete | 100 | 100 |  |  |

| id | type | name | start | finish | baselineStart | baselineFinish | actualStart | actualFinish | parent | resources | status | pctComplete | expectedPct | subheading |
| --- | --- | --- | --- | --- | --- | --- | --- | --- | --- | --- | --- | --- | --- | --- |
| 24.7 | Subtask | Unit 1 | 2026-06-05T07:00 | 2026-06-28T14:01 | 2026-06-05T07:00 | 2026-06-26T15:00 | 2026-06-05T07:00 |  | 24 | Kelvion | In progress | 14 | 18 | True |
| 24.8 | Subtask | Shell repairs no 1 - 110mm long NS | 2026-06-05T07:00 | 2026-06-22T11:04 | 2026-06-05T07:00 | 2026-06-19T15:00 | 2026-06-05T07:00 |  | 24 | Kelvion | In progress | 15 | 36 | True |
| 24.9 | Subtask | Shell repairs no 2 - 112mm long NS | 2026-06-05T08:00 | 2026-06-19T15:00 | 2026-06-05T08:00 | 2026-06-20T14:01 | 2026-06-05T08:00 |  | 24 | Kelvion | In progress | 16 | 11 | True |
| 24.10 | Subtask | Shell repairs no 3 - 14mm long NS | 2026-06-05T07:00 | 2026-06-19T15:00 | 2026-06-05T08:00 | 2026-06-23T15:00 | 2026-06-05T07:00 |  | 24 | Kelvion | In progress | 5 | 2 | True |
| 24.11 | Subtask | Shell repairs no 4 - 148mm long NS | 2026-06-05T07:00 | 2026-06-19T15:00 | 2026-06-05T08:00 | 2026-06-16T15:00 | 2026-06-05T07:00 |  | 24 | Kelvion | In progress | 28 | 46 | True |
| 24.12 | Subtask | Shell repairs no 5 - 129mm long NS | 2026-06-05T08:00 | 2026-06-21T14:01 | 2026-06-05T08:00 | 2026-06-19T15:00 | 2026-06-05T08:00 |  | 24 | Kelvion | In progress | 14 | 20 | True |
| 24.13 | Subtask | Shell repairs no 6 - 115mm long SS | 2026-06-05T07:00 | 2026-06-26T15:00 | 2026-06-05T08:00 | 2026-06-26T15:00 | 2026-06-05T07:00 |  | 24 | Kelvion | In progress | 8 | 2 | True |
| 24.14 | Subtask | Shell repairs no 7 - 159mm long SS | 2026-06-05T08:00 | 2026-06-28T14:01 | 2026-06-05T08:00 | 2026-06-26T15:00 | 2026-06-05T08:00 |  | 24 | Kelvion | In progress | 12 | 2 | True |
| 24.15 | Subtask | Unit 2 | 2026-06-02T11:03 | 2026-06-25T07:03 | 2026-06-02T11:03 | 2026-06-25T23:05 | 2026-06-02T11:03 |  | 24 | Kelvion | In progress | 34 | 24 | True |
| 24.16 | Subtask | Removal of existing Support | 2026-06-02T11:03 | 2026-06-11T09:00 | 2026-06-02T11:03 | 2026-06-09T16:02 | 2026-06-02T11:03 |  | 24 | Kelvion | In progress | 99 | 100 |  |
| 24.17 | Subtask | Remove welding for existing support | 2026-06-02T11:03 | 2026-06-05T11:03 | 2026-06-02T11:03 | 2026-06-05T11:03 | 2026-06-02T11:03 |  | 24 | Kelvion | In progress | 90 | 100 |  |
| 24.18 | Subtask | Install new temp support | 2026-06-03T08:00 | 2026-06-09T16:00 | 2026-06-03T08:00 | 2026-06-08T10:02 | 2026-06-03T08:00 | 2026-06-09T16:00 | 24 | Kelvion | Complete | 100 | 100 |  |
| 24.19 | Subtask | Shell repairs (Unit 2) | 2026-06-09T16:02 | 2026-06-22T01:03 | 2026-06-09T16:02 | 2026-06-22T17:05 | 2026-06-09T16:02 |  | 24 | Kelvion | In progress | 1 | 6 | True |
| 24.20 | Subtask | Pedestal Replacement | 2026-06-22T01:03 | 2026-06-25T07:03 |  | 2026-06-25T23:05 |  |  | 24 | Kelvion | Not started | 0 | 0 | True |
| 24.21 | Subtask | Close Out | 2026-06-28T14:01 | 2026-06-30T17:01 | 2026-06-26T15:00 | 2026-06-30T19:00 |  |  | 24 | Kelvion | Not started | 0 | 0 | True |
| 24.22 | Subtask | Do final punching and inspections | 2026-06-28T14:01 | 2026-06-29T16:01 | 2026-06-26T15:00 | 2026-06-27T18:01 |  |  | 24 | Kelvion | Not started | 0 | 0 |  |
| 24.23 | Subtask | Issue COR | 2026-06-28T14:01 | 2026-06-29T16:01 | 2026-06-26T15:00 | 2026-06-27T18:01 |  |  | 24 | Kelvion | Not started | 0 | 0 |  |
| 24.24 | Subtask | Unit Start Date | 2026-06-29T16:01 | 2026-06-30T17:01 | 2026-06-29T07:00 | 2026-06-30T08:00 |  |  | 24 | Kelvion | Not started | 0 | 0 |  |
| 25 | MAIN TASK | Envirotech | 2026-06-08T16:22 | 2026-06-14T16:23 |  |  |  |  |  |  |  |  |  |  |
| 26 | MAIN TASK | Baymond | 2026-06-08T07:13 | 2026-06-15T07:13 |  |  |  |  |  |  |  |  |  |  |
| 20.15 | Subtask | Removal and replace of MHTFP 31 bellows | 2026-06-17T09:45 | 2026-06-30T09:45 |  |  |  |  | 20 |  | In progress |  |  |  |
| 27 | MAIN TASK | Pezula - Scaffolding Insulation | 2026-06-01T15:19 | 2026-06-30T15:19 |  |  |  |  |  |  | In progress |  |  |  |
